# LP_v2_Phase1_from_MP.xml

How a schedule from MS Project XML changed from version to version. A marks actual dates.

## Version 1 (saved 2015-03-08, file LP_v2_Phase1_Milestones.xml)

Note of the change: Init documents

| ID | WBS | Task | Duration | Start | Finish | Predecessors | Complete | Total float | Constraint |
| --- | --- | --- | --- | --- | --- | --- | --- | --- | --- |
| 1 | 1 | **Phase1 M1** | 28d | 2015-02-23 A | 2015-04-01 |  | 12% | 43d |  |
| 2 | 2 | **RTL Design** | 25d | 2015-02-23 A | 2015-03-27 |  | 9% | 44d |  |
| 3 |  | Micro-arch document | 3d | 2015-02-23 A | 2015-02-25 A |  | 100% |  |  |
| 4 |  | MB changes | 5d | 2015-03-09 | 2015-03-13 |  |  | 49d | start no earlier than 2015-03-09 |
| 5 |  | SB and RTR changes | 5d | 2015-03-16 | 2015-03-20 | 3 |  | 44d | start no earlier than 2015-03-16 |
| 6 |  | V1 arch cleanup in the design | 10d | 2015-03-09 | 2015-03-20 |  |  | 11d | start no earlier than 2015-03-09 |
| 7 | 2.4 | **NSPS:** | 5d | 2015-03-23 | 2015-03-27 |  |  | 44d |  |
| 8 |  | Aggregation logic | 2d | 2015-03-23 | 2015-03-24 | 4, 5 |  | 47d | start no earlier than 2015-03-23 |
| 9 |  | PDS | 3d | 2015-03-25 | 2015-03-27 | 4, 5 |  | 44d | start no earlier than 2015-03-25 |
| 10 |  | Isolation polarity changes for output ports * | 5d | 2015-03-23 | 2015-03-27 | 4, 5 |  | 44d |  |
| 11 | 1.7 | **Gen_ip:** | 11d | 2015-03-11 | 2015-03-25 |  |  | 10d |  |
| 12 |  | Valid traffic flow with PD information | 3d | 2015-03-11 | 2015-03-13 |  |  | 18d | start no earlier than 2015-03-11 |
| 13 |  | Cleanup of V1 architecture code | 1d | 2015-03-23 | 2015-03-23 | 6 |  | 12d | start no earlier than 2015-03-23 |
| 14 |  | Cleanup for REGBUS | 1d | 2015-03-24 | 2015-03-24 | 6 |  | 10d | start no earlier than 2015-03-24 |
| 15 |  | V2 Architecture integration | 1d | 2015-03-25 | 2015-03-25 | 14 |  | 10d | start no earlier than 2015-03-25 |
| 16 | 1.5 | **Tune_power:** | 8d | 2015-03-23 | 2015-04-01 |  |  | 43d |  |
| 17 |  | Cleanup for REGBUS | 1d | 2015-03-23 | 2015-03-23 |  |  | 50d | start no earlier than 2015-03-23 |
| 18 |  | Support for V2 architecture | 5d | 2015-03-26 | 2015-04-01 | 11 |  | 43d |  |
| 19 |  | GenStreamX changes to buildSim | 2d | 2015-03-26 | 2015-03-27 | 11 |  | 46d |  |
| 20 |  | Test/Coverage Plan | 7d | 2015-03-02 A | 2015-03-10 |  | 50% | 17d | start no earlier than 2015-03-02 |
| 21 | 2 | **Phase1 M2** | 26d | 2015-03-11 | 2015-04-15 |  |  | 11d |  |
| 22 | 1.1 | **AXI4 GenCPF:** | 8d | 2015-03-16 | 2015-03-25 |  |  | 10d |  |
| 23 |  | Cleanup for REGBUS | 1d | 2015-03-16 | 2015-03-16 |  |  | 17d | start no earlier than 2015-03-16 |
| 24 |  | Changes from pin-level to PD level Iso rules | 1d | 2015-03-17 | 2015-03-17 |  |  | 16d | start no earlier than 2015-03-17 |
| 25 |  | RTL grouping | 5d | 2015-03-18 | 2015-03-24 |  |  | 11d | start no earlier than 2015-03-18 |
| 26 |  | Tech and Lib pointers | 1d | 2015-03-25 | 2015-03-25 |  |  | 10d | start no earlier than 2015-03-25 |
| 27 |  | CLP scritps | 2d | 2015-03-16 | 2015-03-17 |  |  | 16d | start no earlier than 2015-03-16 |
| 28 |  | PMXTOR design | 6d | 2015-03-11 | 2015-03-18 |  |  | 11d | start no earlier than 2015-03-11 |
| 29 |  | GenStreamX changes for PMXTOR etc | 2d | 2015-04-07 | 2015-04-08 | 11, 28 |  | 33d | start no earlier than 2015-04-07 |
| 30 |  | CLP and LPS AXI4 hand written cfgs passing | 5d | 2015-04-09 | 2015-04-15 | 29 |  | 33d |  |
| 31 |  | Test/Coverage Plan Review | 2d | 2015-03-19 | 2015-03-20 | 28, 20 |  | 51d |  |
| 32 | 3 | **Phase1 M3** | 43d | 2015-02-25 A | 2015-04-24 |  | 10% | 26d |  |
| 33 | 4.8 | **AXI4 LP Checkers work** | 20d | 2015-02-25 A | 2015-03-24 |  | 26% | 48d |  |
| 34 |  | Element level LP checker | 15d | 2015-02-25 A | 2015-03-17 |  | 40% | 53d | start no earlier than 2015-02-25 |
| 35 |  | Power Domain level Isolation LP checker | 5d | 2015-03-09 | 2015-03-13 |  |  | 55d | start no earlier than 2015-03-09 |
| 36 |  | NSPS PD Sequence LP checker | 13d | 2015-03-02 A | 2015-03-18 |  | 30% | 52d | start no earlier than 2015-03-02 |
| 37 |  | Clock domain or gating related checkers | 5d | 2015-03-18 | 2015-03-24 |  |  | 45d | start no earlier than 2015-03-18 |
| 38 | 1.3 | **AXI4 GenLPBindCheckers:** | 7d | 2015-03-26 | 2015-04-03 |  |  | 41d |  |
| 39 |  | Element level LP checker | 1d | 2015-03-26 | 2015-03-26 | 34, 11 |  | 47d | start no earlier than 2015-03-26 |
| 40 |  | Power Domain level Isolation LP checker | 1d | 2015-03-27 | 2015-03-27 | 35, 11 |  | 46d | start no earlier than 2015-03-27 |
| 41 |  | NSPS PD Sequence LP checker | 1d | 2015-03-30 | 2015-03-30 | 36, 11 |  | 45d | start no earlier than 2015-03-30 |
| 42 |  | Clock domain or gating related checkers | 4d | 2015-03-31 | 2015-04-03 | 37, 11 |  | 41d | start no earlier than 2015-03-31 |
| 43 | 1.1 | **Non-AXI4 GenCPF:** | 6d | 2015-04-15 | 2015-04-22 |  |  | 28d |  |
| 44 |  | Cleanup for REGBUS | 1d | 2015-04-15 | 2015-04-15 | 11 |  | 33d | start no earlier than 2015-04-15 |
| 45 |  | Changes from pin-level to PD level Iso rules | 1d | 2015-04-16 | 2015-04-16 | 11 |  | 32d | start no earlier than 2015-04-16 |
| 46 |  | RTL grouping | 3d | 2015-04-17 | 2015-04-21 | 11 |  | 29d | start no earlier than 2015-04-17 |
| 47 |  | Tech and Lib pointers | 1d | 2015-04-22 | 2015-04-22 | 11 |  | 28d | start no earlier than 2015-04-22 |
| 48 |  | Valid PD & CD Sequence test | 4d | 2015-03-19 | 2015-03-24 | 20, 28 |  | 11d | start no earlier than 2015-03-19 |
| 49 |  | AXI4 Handwritten cfgs CDC runs | 5d | 2015-04-14 | 2015-04-20 | 11 |  | 5d | start no earlier than 2015-04-14 |
| 50 |  | AXI4 Handwritten cfgs Synthesis runs | 10d | 2015-04-13 | 2015-04-24 | 11 |  | 0d | finish no earlier than 2015-04-24 |
| 51 |  | CLP NW Regression health (AXI4 80%) | 10d | 2015-03-26 | 2015-04-08 | 11, 22, 27 |  | 26d |  |
| 52 |  | LPS NW Regression health (AXI4 80% w/o host chechers) | 10d | 2015-04-08 | 2015-04-21 | 11, 22, 27, 48 |  | 1d | start no earlier than 2015-04-08 |
| 53 |  | Code Coverage (AXI4 80%) | 10d | 2015-04-08 | 2015-04-21 | 11, 22, 27, 48 |  | 2d | start no earlier than 2015-04-08 |
| 54 | 4 | **Phase1 M4** | 40d | 2015-03-16 | 2015-05-08 |  |  | 11d |  |
| 55 |  | Error PD & CD Sequence test | 5d | 2015-03-30 | 2015-04-03 | 48 |  | 41d | start no earlier than 2015-03-30 |
| 56 | 1.1.6 | **CPFs for DVFS** | 22d | 2015-04-02 | 2015-05-01 |  |  | 21d |  |
| 57 |  | Definition of DVFS modes of operation | 2d | 2015-04-02 | 2015-04-03 |  |  | 39d | start no earlier than 2015-04-02 |
| 58 |  | GenCPF update for DVFS | 2d | 2015-04-30 | 2015-05-01 | 57 |  | 21d | start no earlier than 2015-04-30 |
| 59 | 4.8 | **Non-AXI4 LP Checkers work** | 17.33d | 2015-03-18 | 2015-04-10 |  |  | 0.67d |  |
| 60 |  | Element level LP checker | 6d | 2015-03-25 | 2015-04-01 |  |  | 7d | start no earlier than 2015-03-25 |
| 61 |  | Power Domain level Isolation LP checker | 9d | 2015-03-18 | 2015-03-30 |  |  | 9d | start no earlier than 2015-03-18 |
| 62 |  | NSPS PD Sequence LP checker | 1.33d | 2015-04-09 | 2015-04-10 |  |  | 0.67d | start no earlier than 2015-04-09 |
| 63 |  | Clock domain or gating related checkers | 4d | 2015-04-02 | 2015-04-07 |  |  | 3d | start no earlier than 2015-04-02 |
| 64 | 1.3 | **Non-AXI4 GenLPBindCheckers:** | 5d | 2015-04-23 | 2015-04-29 |  |  | 23d |  |
| 65 |  | Element level LP checker | 1d | 2015-04-23 | 2015-04-23 | 2, 60 |  | 27d | start no earlier than 2015-04-23 |
| 66 |  | Power Domain level Isolation LP checker | 1d | 2015-04-24 | 2015-04-24 | 2, 61 |  | 26d | start no earlier than 2015-04-24 |
| 67 |  | NSPS PD Sequence LP checker | 1d | 2015-04-27 | 2015-04-27 | 2, 62 |  | 25d | start no earlier than 2015-04-27 |
| 68 |  | Clock domain or gating related checkers | 2d | 2015-04-28 | 2015-04-29 | 2, 63 |  | 23d | start no earlier than 2015-04-28 |
| 69 | 1.1.5 | **CPFs for Scan** | 37d | 2015-03-16 | 2015-05-05 |  |  | 19d |  |
| 70 |  | Definition of Scan aware synthesis strategy | 2d | 2015-03-16 | 2015-03-17 |  |  | 52d | start no earlier than 2015-03-16 |

| ID | WBS | Task | Duration | Start | Finish | Predecessors | Total float | Constraint |
| --- | --- | --- | --- | --- | --- | --- | --- | --- |
| 71 |  | GenCPF update for Scan | 2d | 2015-05-04 | 2015-05-05 | 70 | 19d | start no earlier than 2015-05-04 |
| 72 | 4.2 | **XTOR development:** | 6d | 2015-03-17 | 2015-03-24 |  | 44d |  |
| 73 |  | SYNC_UNIT design | 2d | 2015-03-23 | 2015-03-24 |  | 44d | start no earlier than 2015-03-23 |
| 74 |  | CXT changes for sync | 2d | 2015-03-17 | 2015-03-18 |  | 48d | start no earlier than 2015-03-17 |
| 75 |  | AHBXTOR changes for sync | 1d | 2015-03-19 | 2015-03-19 |  | 47d | start no earlier than 2015-03-19 |
| 76 |  | AMBAXTOR (Sanity) changes for sync | 1d | 2015-03-20 | 2015-03-20 |  | 46d | start no earlier than 2015-03-20 |
| 77 | 4.6 | **Nemesis traffic generation** | 17d | 2015-03-25 | 2015-04-16 |  | 32d |  |
| 78 |  | SYNC_UNIT traffic generation * | 1d | 2015-03-25 | 2015-03-25 | 20, 28, 72 | 48d | start no earlier than 2015-03-18 |
| 79 |  | Power and Clock gating/enabling * | 5d | 2015-03-26 | 2015-04-01 | 20, 28, 72 | 43d | start no earlier than 2015-03-26 |
| 80 |  | Dynamic change of frequences or DVFS * | 4d | 2015-04-02 | 2015-04-07 | 20, 28, 72 | 39d | start no earlier than 2015-04-02 |
| 81 |  | Cold boot randomization * | 2d | 2015-04-08 | 2015-04-09 | 20, 28, 72 | 37d | start no earlier than 2015-04-08 |
| 82 |  | Error scenarios for LP * | 5d | 2015-04-10 | 2015-04-16 | 20, 28, 72 | 32d | start no earlier than 2015-04-10 |
| 83 |  | AXI4 CDC runs | 5d | 2015-04-21 | 2015-04-27 | 11, 49 | 5d | finish no earlier than 2015-04-10 |
| 84 |  | AXI4 Synthesis runs | 10d | 2015-04-27 | 2015-05-08 | 50, 11 | 0d | finish no earlier than 2015-04-24 |
| 85 |  | CLP NW Regression health (AXI4 100%, Non-AXI4 70%) | 4d | 2015-04-09 | 2015-04-14 | 51 | 26d |  |
| 86 |  | LPS NW Regression health (AXI4 100%, Non-AXI4 70%) w/o host checkers | 10d | 2015-04-22 | 2015-05-05 | 52 | 1d | start no earlier than 2015-04-21 |
| 87 |  | Code Coverage (AXI4 100%, Non-AXI4 70%) | 10d | 2015-04-22 | 2015-05-05 | 53 | 2d |  |
| 88 |  | Functional Coverage Coding (50%) | 15d | 2015-04-10 | 2015-05-01 | 59 | 0.67d | start no earlier than 2015-04-10 |
| 89 | 5 | **Phase1 M5** | 26d | 2015-04-15 | 2015-05-20 |  | 8d |  |
| 90 | 3 | **SW Verif** | 14d | 2015-04-22 | 2015-05-11 |  | 15d |  |
| 91 | 3.1 | **Testplan:** | 5d | 2015-04-22 | 2015-04-28 |  | 15d |  |
| 92 |  | Tune_power | 3d | 2015-04-22 | 2015-04-24 |  | 17d | start no earlier than 2015-04-22 |
| 93 |  | CPFs | 1d | 2015-04-27 | 2015-04-27 |  | 16d | start no earlier than 2015-04-27 |
| 94 |  | LP RTL | 1d | 2015-04-28 | 2015-04-28 |  | 15d | start no earlier than 2015-04-28 |
| 95 | 3.2 | **Verif** | 9d | 2015-04-29 | 2015-05-11 |  | 15d |  |
| 96 |  | Tune_power | 4d | 2015-04-29 | 2015-05-04 | 91 | 20d | start no earlier than 2015-03-25 |
| 97 |  | CPFs | 4d | 2015-04-29 | 2015-05-04 | 91 | 20d | start no earlier than 2015-04-29 |
| 98 |  | LP RTL | 9d | 2015-04-29 | 2015-05-11 | 91 | 15d | start no earlier than 2015-04-29 |
| 99 |  | LP Property Coverage monitor | 5d | 2015-05-05 | 2015-05-11 | 91 | 15d | start no earlier than 2015-05-05 |
| 100 |  | Functional Coverage Coding (100%) | 11d | 2015-05-01 | 2015-05-18 | 88 | 0.67d |  |
| 101 |  | CLP NW Regression health (AXI4 100%, Non-AXI4 90%) | 4d | 2015-04-15 | 2015-04-20 | 85 | 26d |  |
| 102 |  | LPS NW Regression health (AXI4 100%, Non-AXI4 90%) | 10d | 2015-05-06 | 2015-05-19 | 86 | 1d |  |
| 103 |  | Code Coverage (AXI4 100%, Non-AXI4 90%) | 10d | 2015-05-06 | 2015-05-19 | 87 | 2d |  |
| 104 |  | Functional Coverage (50%) | 10d | 2015-05-01 | 2015-05-15 | 88 | 1.67d |  |
| 105 |  | Non-AXI4 CDC runs | 10d | 2015-04-28 | 2015-05-11 | 83 | 5d |  |
| 106 |  | Non-AXI4 Synthesis runs | 8d | 2015-05-11 | 2015-05-20 | 84 | 0d |  |
| 107 | 6 | **Phase1 M6** | 30d | 2015-04-21 | 2015-06-01 |  | 0d |  |
| 108 |  | Sanity bench development for LP | 5d | 2015-05-11 | 2015-05-15 |  | 1d | start no earlier than 2015-05-11 |
| 109 |  | Sanity bench Regressions for LP | 10d | 2015-05-18 | 2015-05-29 | 108 | 1d |  |
| 110 |  | Release Documentation | 10d | 2015-05-04 | 2015-05-15 |  | 11d | start no earlier than 2015-05-04 |
| 111 |  | Functional Coverage (100%) | 10d | 2015-05-18 | 2015-06-01 | 100, 104 | 0.67d |  |
| 112 |  | CLP NW Regression health (100%) | 4d | 2015-04-21 | 2015-04-24 | 101 | 26d |  |
| 113 |  | LPS NW Regression health (100%) | 8d | 2015-05-20 | 2015-05-29 | 102 | 1d |  |
| 114 |  | Code Coverage (100%) | 7d | 2015-05-20 | 2015-05-28 | 103 | 2d |  |
| 115 |  | CDC runs on customer and super cfgs | 10d | 2015-05-12 | 2015-05-25 | 105 | 5d |  |
| 116 |  | CLP and RC at pre and post synthesis on customer and super cfgs | 8d | 2015-05-21 | 2015-06-01 | 106 | 0d |  |
| 117 |  | Checklist status review | 4d | 2015-05-27 | 2015-06-01 |  | 0d | start no earlier than 2015-05-27 |

## Version 2 (saved 2015-04-20, file LP_v2_Phase1_Milestones_v4.mpp)

Note of the change: Init documents

Last finish 2015-06-01 → 2015-06-24 (+23d). Complete tasks 1 → 9.

Added:

| ID | Task | Duration | Start | Finish | Predecessors | Constraint | Resources |
| --- | --- | --- | --- | --- | --- | --- | --- |
| 7 | V1 arch RTL cleanup in the design | 5d | 2015-04-30 | 2015-05-06 | 6 | start no earlier than 2015-03-09 | Rimu; Joji |
| 13 | Valid traffic flow with CD information | 2d | 2015-04-20 A | 2015-04-21 A |  | start no earlier than 2015-04-20 | Anup |
| 20 | **TB XTOR Sync changes** | 6d | 2015-03-17 A | 2015-03-24 A |  |  |  |
| 47 | Verification Plan Documentation and Review | 8d | 2015-05-04 | 2015-05-13 | 74 |  | Vishnu [50%] |
| 89 | Functional Coverage Coding (70%) | 10d | 2015-05-21 | 2015-06-03 | 80, 44 | start no earlier than 2015-05-21 | Vinay [25%]; Santhosh [50%] |

Removed: 6 V1 arch cleanup in the design; 29 GenStreamX changes for PMXTOR etc; 37 Clock domain or gating related checkers; 42 Clock domain or gating related checkers; 44 Cleanup for REGBUS; 48 Valid PD & CD Sequence test; 63 Clock domain or gating related checkers; 67 NSPS PD Sequence LP checker; 68 Clock domain or gating related checkers; 72 XTOR development:; 85 CLP NW Regression health (AXI4 100%, Non-AXI4 70%); 86 LPS NW Regression health (AXI4 100%, Non-AXI4 70%) w/o host checkers; 87 Code Coverage (AXI4 100%, Non-AXI4 70%); 88 Functional Coverage Coding (50%); 105 Non-AXI4 CDC runs; 106 Non-AXI4 Synthesis runs; 107 Phase1 M6; 108 Sanity bench development for LP; 109 Sanity bench Regressions for LP

Changed:

| ID | Task | Start | Finish | Duration | Complete | Total float | Predecessors | Other |
| --- | --- | --- | --- | --- | --- | --- | --- | --- |
| 1 | **Phase1 M1** |  | 2015-04-01 → 2015-05-06 (+35d) | 28d → 53d | 12% → 49% | 43d → 32d |  |  |
| 2 | **RTL Design** |  | 2015-03-27 → 2015-05-06 (+40d) | 25d → 53d | 9% → 30% | 44d → 32d |  |  |
| 4 | MB changes | 2015-03-09 → 2015-04-09 A (+31d) | 2015-03-13 → 2015-04-15 (+33d) |  | 0% → 60% | 49d → 1d |  | constraint start no earlier than 2015-03-09 → start no earlier than 2015-04-09 |
| 5 | SB and RTR changes | 2015-03-16 → 2015-04-16 A (+31d) | 2015-03-20 → 2015-04-22 (+33d) |  | 0% → 20% | 44d → 0d | 3 → 3, 4 | resources Joji → Rimu |
| 6 | Isolation polarity changes for output ports * | 2015-03-23 → 2015-04-23 (+31d) | 2015-03-27 → 2015-04-29 (+33d) |  |  | 44d → 0d |  |  |
| 8 | **NSPS:** | 2015-03-23 → 2015-04-23 A (+31d) | 2015-03-27 → 2015-04-29 (+33d) |  | 0% → 30% | 44d → 37d |  |  |
| 9 | Aggregation logic | 2015-03-23 → 2015-04-28 (+36d) | 2015-03-24 → 2015-04-29 (+36d) |  |  | 47d → 37d | 4, 5 → 10 |  |
| 10 | PDS | 2015-03-25 → 2015-04-23 A (+29d) | 2015-03-27 → 2015-04-27 (+31d) |  | 0% → 50% | 44d → 37d |  | constraint start no earlier than 2015-03-25 → start no earlier than 2015-04-20 |
| 11 | **Gen_ip:** | 2015-03-11 A | 2015-03-25 → 2015-05-01 (+37d) | 11d → 38d | 0% → 50% | 10d → 0d |  |  |
| 12 | Valid traffic flow with PD information | 2015-03-11 A | 2015-03-13 A |  | 0% → 100% | 18d → none |  |  |
| 14 | Cleanup of V1 architecture code | 2015-03-23 → 2015-04-16 (+24d) | 2015-03-23 → 2015-04-16 (+24d) |  |  | 12d → 7d | V1 arch cleanup in the design → none | constraint start no earlier than 2015-03-23 → start no earlier than 2015-04-16 |
| 15 | Cleanup for REGBUS | 2015-03-24 → 2015-04-17 (+24d) | 2015-03-24 → 2015-04-20 (+27d) | 1d → 2d |  | 10d → 7d | V1 arch cleanup in the design → 14 | constraint start no earlier than 2015-03-24 → none |
| 16 | V2 Architecture integration | 2015-03-25 → 2015-04-30 (+36d) | 2015-03-25 → 2015-05-01 (+37d) | 1d → 2d |  | 10d → 0d | 15 → 15, 6, 4, 5 |  |
| 17 | **Tune_power:** | 2015-03-23 → 2015-04-21 (+29d) | 2015-04-01 → 2015-04-28 (+27d) | 8d → 6d |  | 43d → 6d |  |  |
| 18 | Cleanup for REGBUS | 2015-03-23 → 2015-04-21 (+29d) | 2015-03-23 → 2015-04-21 (+29d) |  |  | 50d → 6d |  | constraint start no earlier than 2015-03-23 → start no earlier than 2015-04-21 |
| 19 | Support for V2 architecture | 2015-03-26 → 2015-04-22 (+27d) | 2015-04-01 → 2015-04-28 (+27d) |  |  | 43d → 6d | 11 → 18 |  |
| 21 | SYNC_UNIT design | 2015-03-23 A | 2015-03-24 A |  | 0% → 100% | 44d → none |  | resources Vishnu → Harsha |
| 22 | CXT changes for sync | 2015-03-17 A | 2015-03-18 A |  | 0% → 100% | 48d → none |  | resources JJ → Joe |
| 23 | AHBXTOR changes for sync | 2015-03-19 A | 2015-03-19 A |  | 0% → 100% | 47d → none |  | resources JJ → Jaya |
| 24 | AMBAXTOR (Sanity) changes for sync | 2015-03-20 A | 2015-03-20 A |  | 0% → 100% | 46d → none |  | resources JJ → Joe |
| 25 | PMXTOR design | 2015-03-11 A | 2015-03-18 A |  | 0% → 100% | 11d → none |  |  |
| 26 | GenStreamX changes for LP TB integration | 2015-03-26 → 2015-05-04 (+39d) | 2015-03-27 → 2015-05-06 (+40d) | 2d → 3d |  | 46d → 0d | 11 → 11, 20, 25 | was named GenStreamX changes to buildSim; constraint none → start no earlier than 2015-05-04 |
| 27 | Test/Coverage Plan |  | 2015-03-10 A |  | 50% → 100% | 17d → none |  |  |
| 28 | **Phase1 M2** | 2015-03-11 → 2015-04-02 A (+22d) | 2015-04-15 → 2015-05-13 (+28d) | 26d → 30d | 0% → 7% | 11d → 30d |  |  |
| 29 | **AXI4 GenCPF:** | 2015-03-16 → 2015-04-22 (+37d) | 2015-03-25 → 2015-05-01 (+37d) |  |  | 10d → 1d |  |  |
| 30 | Cleanup for REGBUS | 2015-03-16 → 2015-04-22 (+37d) | 2015-03-16 → 2015-04-22 (+37d) |  |  | 17d → 1d | none → 13 |  |
| 31 | Changes from pin-level to PD level Iso rules | 2015-03-17 → 2015-04-23 (+37d) | 2015-03-17 → 2015-04-23 (+37d) |  |  | 16d → 1d | none → 30 |  |
| 32 | RTL grouping | 2015-03-18 → 2015-04-24 (+37d) | 2015-03-24 → 2015-04-30 (+37d) |  |  | 11d → 1d | none → 31 |  |
| 33 | Tech and Lib pointers | 2015-03-25 → 2015-05-01 (+37d) | 2015-03-25 → 2015-05-01 (+37d) |  |  | 10d → 1d | none → 32 |  |
| 34 | CLP scritps | 2015-03-16 → 2015-05-04 (+49d) | 2015-03-17 → 2015-05-05 (+49d) |  |  | 16d → 1d | none → 29 | constraint start no earlier than 2015-03-16 → start no earlier than 2015-04-23 |
| 35 | **Nemesis traffic generation** | 2015-03-25 → 2015-04-02 A (+8d) | 2015-04-16 → 2015-05-01 (+15d) | 17d → 22d | 0% → 23% | 32d → 12d |  |  |
| 36 | SYNC_UNIT traffic generation * | 2015-03-25 → 2015-04-20 A (+26d) | 2015-03-25 → 2015-04-20 (+26d) |  | 0% → 70% | 48d → 2.5d | 27, 25, XTOR development: → none | resources JJ → Santhosh |
| 37 | Power and Clock gating/enabling * | 2015-03-26 → 2015-04-21 A (+26d) | 2015-04-01 → 2015-04-27 (+26d) |  | 0% → 50% | 43d → 12d | 27, 25, XTOR development: → 36 | resources JJ → Santhosh |
| 38 | Dynamic change of frequences or DVFS * |  |  |  |  | 39d → 30d | 27, 25, XTOR development: → none |  |
| 39 | Cold boot randomization * | 2015-04-08 → 2015-04-28 (+20d) | 2015-04-09 → 2015-04-29 (+20d) |  |  | 37d → 12d | 27, 25, XTOR development: → 37 | resources JJ → Santhosh |
| 40 | Error scenarios for LP * | 2015-04-10 → 2015-04-30 (+20d) | 2015-04-16 → 2015-05-01 (+15d) | 5d → 2d |  | 32d → 12d | 27, 25, XTOR development: → 39 | resources JJ → Santhosh |
| 41 | **AXI4 LP Checkers work** | 2015-02-25 A → 2015-05-07 (+71d) | 2015-03-24 → 2015-05-12 (+49d) | 20d → 4d | 26% → 0% | 48d → 5d |  |  |
| 42 | Element level LP checker | 2015-02-25 A → 2015-05-07 (+71d) | 2015-03-17 → 2015-05-08 (+52d) | 15d → 2d | 40% → 0% | 53d → 24d | none → 11, 26, 29 | constraint start no earlier than 2015-02-25 → start no earlier than 2015-04-20 |
| 43 | Power Domain level Isolation LP checker | 2015-03-09 → 2015-05-07 (+59d) | 2015-03-13 → 2015-05-08 (+56d) | 5d → 2d |  | 55d → 5d | none → 11, 26, 34, 29 |  |
| 44 | NSPS PD Sequence LP checker | 2015-03-02 A → 2015-05-11 (+70d) | 2015-03-18 → 2015-05-12 (+55d) | 13d → 2d | 30% → 0% | 52d → 5d | none → 43, 11, 26, 29 | constraint start no earlier than 2015-03-02 → start no earlier than 2015-05-08; resources Santhosh → Santhosh [25%]; Harsha [75%] |
| 45 | CLP and LPS AXI4 hand written cfgs passing | 2015-04-09 → 2015-05-07 (+28d) | 2015-04-15 → 2015-05-13 (+28d) |  |  | 33d → 0d | GenStreamX changes for PMXTOR etc → 11, 17, 26, 34, 20, 25, 29 | resources Harsha [50%]; Vinay [50%] → Vishnu [50%] |
| 46 | Test/Coverage Plan Review | 2015-03-19 → 2015-04-23 (+35d) | 2015-03-20 → 2015-04-24 (+35d) |  |  | 51d → 23d | 25, 27 → none | constraint none → start no earlier than 2015-04-23 |
| 48 | **Phase1 M3** | 2015-02-25 A → 2015-05-04 (+68d) | 2015-04-24 → 2015-05-27 (+33d) | 43d → 18d | 10% → 0% | 26d → 8d |  |  |
| 49 | **AXI4 GenLPBindCheckers:** | 2015-03-26 → 2015-05-11 (+46d) | 2015-04-03 → 2015-05-13 (+40d) | 7d → 3d |  | 41d → 28d |  |  |
| 50 | Element level LP checker | 2015-03-26 → 2015-05-11 (+46d) | 2015-03-26 → 2015-05-11 (+46d) |  |  | 47d → 36d |  |  |
| 51 | Power Domain level Isolation LP checker | 2015-03-27 → 2015-05-12 (+46d) | 2015-03-27 → 2015-05-12 (+46d) |  |  | 46d → 36d | 43, 11 → 11, 50, 43 | constraint start no earlier than 2015-03-27 → none |
| 52 | NSPS PD Sequence LP checker | 2015-03-30 → 2015-05-13 (+44d) | 2015-03-30 → 2015-05-13 (+44d) |  |  | 45d → 28d | 44, 11 → 11, 51, 44 | constraint start no earlier than 2015-03-30 → start no earlier than 2015-05-13 |
| 53 | **Non-AXI4 GenCPF:** | 2015-04-15 → 2015-05-04 (+19d) | 2015-04-22 → 2015-05-06 (+14d) | 6d → 3d |  | 28d → 20d |  |  |
| 54 | Changes from pin-level to PD level Iso rules | 2015-04-16 → 2015-05-04 (+18d) | 2015-04-16 → 2015-05-04 (+18d) |  |  | 32d → 28d | 11 → 33 |  |
| 55 | RTL grouping | 2015-04-17 → 2015-05-05 (+18d) | 2015-04-21 → 2015-05-05 (+14d) | 3d → 1d |  | 29d → 28d | 11 → 54, 32 | constraint start no earlier than 2015-04-17 → start no earlier than 2015-05-05 |
| 56 | Tech and Lib pointers | 2015-04-22 → 2015-05-06 (+14d) | 2015-04-22 → 2015-05-06 (+14d) |  |  |  | 11 → 55, 33 |  |
| 57 | **Non-AXI4 GenLPBindCheckers:** | 2015-04-23 → 2015-05-19 (+26d) | 2015-04-29 → 2015-05-21 (+22d) | 5d → 3d |  | 23d → 24d |  |  |
| 58 | Element level LP checker | 2015-03-25 → 2015-05-19 (+55d) | 2015-04-01 → 2015-05-19 (+48d) | 6d → 1d |  | 7d → 36d | none → 2, 11, 53, 62 | constraint start no earlier than 2015-03-25 → start no earlier than 2015-04-23; resources Vinay → Anup |
| 59 | Power Domain level Isolation LP checker | 2015-03-18 → 2015-05-20 (+63d) | 2015-03-30 → 2015-05-20 (+51d) | 9d → 1d |  | 9d → 24d | none → 58, 2, 11, 53, 63 | constraint start no earlier than 2015-03-18 → start no earlier than 2015-05-06; resources Harsha → Anup |
| 60 | NSPS PD Sequence LP checker | 2015-04-09 → 2015-05-21 (+42d) | 2015-04-10 → 2015-05-21 (+41d) | 1.33d → 1d |  | 0.67d → 24d | none → 59, 2, 11, 53 | constraint start no earlier than 2015-04-09 → start no earlier than 2015-05-13; resources Santhosh [75%] → Anup |
| 61 | **Non-AXI4 LP Checkers work** | 2015-03-18 → 2015-05-11 (+54d) | 2015-04-10 → 2015-05-18 (+38d) | 17.33d → 6d |  | 0.67d → 24d |  |  |
| 62 | Element level LP checker | 2015-04-23 → 2015-05-11 (+18d) | 2015-04-23 → 2015-05-18 (+25d) | 1d → 6d |  | 27d → 24d | 2, 58 → 42 | constraint start no earlier than 2015-04-23 → start no earlier than 2015-03-25; resources Anup → Vinay |
| 63 | Power Domain level Isolation LP checker | 2015-04-24 → 2015-05-13 (+19d) | 2015-04-24 → 2015-05-13 (+19d) |  |  | 26d → 28d | 2, 59 → 43, 44 | constraint start no earlier than 2015-04-24 → start no earlier than 2015-03-18; resources Anup → Harsha |
| 64 | AXI4 Handwritten cfgs CDC runs | 2015-04-14 → 2015-05-14 (+30d) | 2015-04-20 → 2015-05-20 (+30d) |  |  |  | 11 → 45 |  |
| 65 | AXI4 Handwritten cfgs Synthesis runs | 2015-04-13 → 2015-05-14 (+31d) | 2015-04-24 → 2015-05-27 (+33d) |  |  | 0d → 2d | 11 → 45 |  |
| 66 | CLP NW Regression health (AXI4 80%) | 2015-03-26 → 2015-05-14 (+49d) | 2015-04-08 → 2015-05-27 (+49d) |  |  | 26d → 0d | 11, 29, 34 → 45 | resources Vishnu [50%] → Vishnu [25%] |
| 67 | LPS NW Regression health (AXI4 80% w/o host checkers) | 2015-04-08 → 2015-05-14 (+36d) | 2015-04-21 → 2015-05-27 (+36d) |  |  | 1d → 0d | 11, 29, 34, Valid PD & CD Sequence test → 45 | was named LPS NW Regression health (AXI4 80% w/o host chechers); resources Vishnu [50%] → Vishnu [25%] |
| 68 | Code Coverage (AXI4 80%) | 2015-04-08 → 2015-05-14 (+36d) | 2015-04-21 → 2015-05-27 (+36d) |  |  | 2d → 3d | 11, 29, 34, Valid PD & CD Sequence test → 45 | constraint start no earlier than 2015-04-08 → start no earlier than 2015-05-13 |
| 69 | **Phase1 M4** | 2015-03-16 → 2015-04-27 (+42d) | 2015-05-08 → 2015-06-10 (+33d) | 40d → 33d |  | 11d → 10d |  |  |
| 70 | **SW Verif** | 2015-04-22 → 2015-04-27 (+5d) | 2015-05-11 → 2015-05-27 (+16d) | 14d → 23d |  | 15d → 20d |  |  |
| 71 | **Testplan:** | 2015-04-22 → 2015-04-27 (+5d) | 2015-04-28 → 2015-05-01 (+3d) |  |  | 15d → 23d |  |  |
| 72 | Tune_power | 2015-04-22 → 2015-04-27 (+5d) | 2015-04-24 → 2015-04-29 (+5d) |  |  | 17d → 35d | none → 46 | constraint start no earlier than 2015-04-22 → start no earlier than 2015-04-20 |
| 73 | CPFs | 2015-04-27 → 2015-04-30 (+3d) | 2015-04-27 → 2015-04-30 (+3d) |  |  | 16d → 35d | none → 72, 46 |  |
| 74 | LP RTL | 2015-04-28 → 2015-05-01 (+3d) | 2015-04-28 → 2015-05-01 (+3d) |  |  | 15d → 35d | none → 73, 46 |  |
| 75 | **Verif** | 2015-04-29 → 2015-05-07 (+8d) | 2015-05-11 → 2015-05-27 (+16d) | 9d → 15d |  | 15d → 20d |  |  |

| ID | Task | Start | Finish | Duration | Total float | Predecessors | Other |
| --- | --- | --- | --- | --- | --- | --- | --- |
| 76 | Tune_power | 2015-04-29 → 2015-05-07 (+8d) | 2015-05-04 → 2015-05-14 (+10d) | 4d → 6d | 20d → 41d | 71 → 74, 53 |  |
| 77 | CPFs | 2015-04-29 → 2015-05-07 (+8d) | 2015-05-04 → 2015-05-18 (+14d) | 4d → 8d | 20d → 39d | 71 → 74, 53 |  |
| 78 | LP RTL | 2015-04-29 → 2015-05-07 (+8d) | 2015-05-11 → 2015-05-20 (+9d) | 9d → 10d | 15d → 37d | 71 → 74, 53 |  |
| 79 | LP Property Coverage monitor | 2015-05-05 → 2015-05-07 (+2d) | 2015-05-11 → 2015-05-27 (+16d) | 5d → 15d | 15d → 32d | 71 → 74, 53 | resources Bhum → Infonam3 |
| 80 | Error PD & CD Sequence test | 2015-03-30 → 2015-05-13 (+44d) | 2015-04-03 → 2015-05-20 (+47d) | 5d → 6d | 41d → 5d | Valid PD & CD Sequence test → 35, 44 |  |
| 81 | **CPFs for DVFS** | 2015-04-02 → 2015-04-29 (+27d) | 2015-05-01 → 2015-05-08 (+7d) | 22d → 8d | 21d → 31d |  |  |
| 82 | Definition of DVFS modes of operation | 2015-04-02 → 2015-04-29 (+27d) | 2015-04-03 → 2015-05-04 (+31d) | 2d → 4d | 39d → 41d | none → 19 | constraint start no earlier than 2015-04-02 → start no earlier than 2015-04-20 |
| 83 | GenCPF update for DVFS | 2015-04-30 → 2015-05-07 (+7d) | 2015-05-01 → 2015-05-08 (+7d) |  | 21d → 39d | 82 → 82, 56 | constraint start no earlier than 2015-04-30 → start no earlier than 2015-05-04 |
| 84 | **CPFs for Scan** | 2015-03-16 → 2015-04-30 (+45d) | 2015-05-05 → 2015-05-15 (+10d) | 37d → 12d | 19d → 28d |  |  |
| 85 | Definition of Scan aware synthesis strategy | 2015-03-16 → 2015-04-30 (+45d) | 2015-03-17 → 2015-05-01 (+45d) |  | 52d → 44d |  | constraint start no earlier than 2015-03-16 → start no earlier than 2015-04-30 |
| 86 | GenCPF update for Scan | 2015-05-04 → 2015-05-14 (+10d) | 2015-05-05 → 2015-05-15 (+10d) |  | 19d → 28d | 85 → 85, 83, 52 | constraint start no earlier than 2015-05-04 → start no earlier than 2015-05-11 |
| 87 | AXI4 and Non-AXI4 CDC runs | 2015-04-21 → 2015-05-21 (+30d) | 2015-04-27 → 2015-06-03 (+37d) | 5d → 10d |  |  | was named AXI4 CDC runs |
| 88 | AXI4 and Non-AXI4 Synthesis runs | 2015-04-27 → 2015-05-28 (+31d) | 2015-05-08 → 2015-06-10 (+33d) |  | 0d → 2d |  | was named AXI4 Synthesis runs |
| 90 | CLP NW Regression health (AXI4 100%, Non-AXI4 90%) | 2015-04-15 → 2015-05-28 (+43d) | 2015-04-20 → 2015-06-10 (+51d) | 4d → 10d | 26d → 0d | CLP NW Regression health (AXI4 100%, Non-AXI4 70%) → 66 | resources Santhosh [25%] → Santhosh [25%]; Vishnu [25%] |
| 91 | LPS NW Regression health (AXI4 100%, Non-AXI4 90%) | 2015-05-06 → 2015-05-28 (+22d) | 2015-05-19 → 2015-06-10 (+22d) |  | 1d → 0d | LPS NW Regression health (AXI4 100%, Non-AXI4 70%) w/o host checkers → 67 | constraint none → start no earlier than 2015-04-21; resources Vinay [25%] → Vinay [25%]; Vishnu [25%] |
| 92 | Code Coverage (AXI4 100%, Non-AXI4 90%) | 2015-05-06 → 2015-05-28 (+22d) | 2015-05-19 → 2015-06-10 (+22d) |  | 2d → 3d | Code Coverage (AXI4 100%, Non-AXI4 70%) → 68 | constraint none → start no earlier than 2015-05-28; resources Vishnu [25%] → Harsha [50%] |
| 93 | Functional Coverage (50%) | 2015-05-01 → 2015-06-04 (+34d) | 2015-05-15 → 2015-06-08 (+24d) | 10d → 3d | 1.67d → 7d | Functional Coverage Coding (50%) → 89 | resources Vinay [25%]; Santhosh [25%] → Harsha [50%] |
| 94 | **Phase1 M5** | 2015-04-15 → 2015-05-28 (+43d) | 2015-05-20 → 2015-06-24 (+35d) | 26d → 20d | 8d → 0d |  |  |
| 95 | Release Documentation | 2015-05-04 → 2015-05-28 (+24d) | 2015-05-15 → 2015-06-17 (+33d) | 10d → 15d | 11d → 5d | none → 66, 67 | constraint start no earlier than 2015-05-04 → start no earlier than 2015-05-28; resources Vishnu [75%] → Vishnu [50%] |
| 96 | Functional Coverage Coding (100%) | 2015-05-01 → 2015-06-04 (+34d) | 2015-05-18 → 2015-06-10 (+23d) | 11d → 5d | 0.67d → 5d | Functional Coverage Coding (50%) → 89 | resources Vinay [25%]; Santhosh [25%] → Vinay [25%]; Santhosh [50%] |
| 97 | Functional Coverage (100%) | 2015-05-18 → 2015-06-11 (+24d) | 2015-06-01 → 2015-06-17 (+16d) | 10d → 5d | 0.67d → 5d |  | constraint none → start no earlier than 2015-06-11; resources Vinay [25%]; Santhosh [25%] → Vinay [25%] |
| 98 | CLP NW Regression health (100%) | 2015-04-21 → 2015-06-11 (+51d) | 2015-04-24 → 2015-06-24 (+61d) | 4d → 10d | 26d → 0d |  | resources Santhosh [25%] → Vinay [25%] |
| 99 | LPS NW Regression health (100%) | 2015-05-20 → 2015-06-11 (+22d) | 2015-05-29 → 2015-06-24 (+26d) | 8d → 10d | 1d → 0d |  |  |
| 100 | Code Coverage (100%) | 2015-05-20 → 2015-06-11 (+22d) | 2015-05-28 → 2015-06-19 (+22d) |  | 2d → 3d |  | resources Vishnu [25%] → Vinay [25%] |
| 101 | CDC runs on customer and super cfgs | 2015-05-12 → 2015-06-04 (+23d) | 2015-05-25 → 2015-06-17 (+23d) |  |  | Non-AXI4 CDC runs → 87 |  |
| 102 | CLP and RC at pre and post synthesis on customer and super cfgs | 2015-05-21 → 2015-06-11 (+21d) | 2015-06-01 → 2015-06-22 (+21d) |  | 0d → 2d | Non-AXI4 Synthesis runs → 88 |  |
| 103 | Checklist status review | 2015-05-27 → 2015-06-11 (+15d) | 2015-06-01 → 2015-06-16 (+15d) |  | 0d → 6d | none → 90, 91 |  |

## Version 3 (saved 2015-06-24, file LP_V2_Milestones_v7.mpp)

Note of the change: Init documents

Last finish 2015-06-24 → 2015-07-15 (+21d). Complete tasks 9 → 67.

Added:

| ID | Task | Duration | Start | Finish | Predecessors | Constraint | Resources |
| --- | --- | --- | --- | --- | --- | --- | --- |
| 29 | Isolation of output ports to low | 4d | 2015-05-08 A | 2015-05-13 A |  | start no earlier than 2015-05-08 | Joji |
| 48 | NS integration of AHB master splitting | 3d | 2015-05-14 A | 2015-05-18 A |  | start no earlier than 2015-05-14 | Eric |
| 104 | **Phase2 M6** | 41d | 2015-05-20 A | 2015-07-15 |  |  |  |
| 105 | **RTL Design** | 5d | 2015-05-27 A | 2015-06-02 A |  |  |  |
| 106 | Voltage Crossing FIFO | 2d | 2015-05-28 A | 2015-05-29 A |  | start no earlier than 2015-05-28 | Joji |
| 107 | RBM and RM changes | 2d | 2015-05-27 A | 2015-05-28 A |  | start no earlier than 2015-05-27 | Jaya |
| 108 | Bridge hierarchy modifications for Voltage Crossing and Integration of FIFO | 2d | 2015-06-01 A | 2015-06-02 A | 106 |  | Joji |
| 109 | **Gen_ip** | 21d | 2015-05-29 A | 2015-06-26 |  |  |  |
| 110 | Integration for bridge hierarchy modifications | 3d | 2015-06-24 | 2015-06-26 | 106, 108 | start no earlier than 2015-06-24 | Eric |
| 111 | regbus elements LP signal aggregation | 2d | 2015-05-29 A | 2015-06-01 A | 107 |  | Eric |
| 112 | valid traffic flows for DVFS | 1d | 2015-06-03 | 2015-06-03 | 106, 108 |  | Eric [50%] |
| 113 | valid traffic flows for regbus | 1d | 2015-06-01 A | 2015-06-01 A |  | start no earlier than 2015-06-01 | Eric [50%] |
| 114 | **Gen_CPF** | 24d | 2015-06-02 A | 2015-07-03 |  |  |  |
| 115 | CPFs for DVFS | 2d | 2015-06-29 | 2015-06-30 | 110 |  | Anup |
| 116 | CPFS for regbus | 3d | 2015-06-02 A | 2015-06-04 A | 111 |  | Anup |
| 117 | tech and Lib pointers | 1d | 2015-07-01 | 2015-07-01 | 115, 116 |  | Anup |
| 118 | sdc generation | 1d | 2015-07-02 | 2015-07-02 | 117 |  | Anup |
| 119 | RTL grouping | 1d | 2015-07-03 | 2015-07-03 | 118 |  | Anup |
| 120 | Verif Plan for DVFS | 2d | 2015-05-20 A | 2015-05-21 A |  | start no earlier than 2015-05-20 | Won |
| 121 | Verif Plan for regbus | 3d | 2015-05-27 A | 2015-05-29 A |  |  | Jaya |
| 122 | Verif changes for new hierarchies | 2d | 2015-06-29 | 2015-06-30 | 110 |  | Won |
| 123 | regbus verif infra changes | 5d | 2015-06-01 | 2015-06-05 | 107, 121 |  | Jaya |
| 124 | DVFS verif infra changes | 4d | 2015-05-29 A | 2015-06-03 |  | start no earlier than 2015-05-29 | Won |
| 125 | GenStreamX changes for DVFS | 3d | 2015-06-04 A | 2015-06-08 | 124 |  | Won |
| 126 | GenStreamX changes for regbus | 3d | 2015-06-08 | 2015-06-10 | 123 |  | Jaya |
| 127 | Regbus sweep and error scenario tests | 5d | 2015-06-11 | 2015-06-17 | 123, 126 |  | Jaya |
| 128 | **Regbus LP checkers** | 7d | 2015-06-18 | 2015-06-26 |  |  |  |
| 129 | Element level LP checker | 4d | 2015-06-18 | 2015-06-23 | 127 |  | Jaya |
| 130 | Power Domain level Isolation LP checker | 3d | 2015-06-24 | 2015-06-26 | 129 |  | Jaya |
| 131 | NW for DVFS and regbus | 5d | 2015-07-06 | 2015-07-10 | 119 |  | Santhosh |
| 132 | CLP scripts for DVFS | 2d | 2015-06-29 | 2015-06-30 | 110, 111 |  | Vishnu |
| 133 | regbus code coverage analysis | 3d | 2015-06-18 | 2015-06-22 | 127 |  | Won |
| 134 | regbus functional coverage coding | 3d | 2015-06-29 | 2015-07-01 | 130 |  | Jaya |
| 135 | DVFS and REGBUS CDC runs | 10d | 2015-06-18 | 2015-07-01 | 127 |  | Sandip |
| 136 | DVFS and REGBUS Synthesis runs | 15d | 2015-06-18 | 2015-07-08 | 127 |  | Rajesh |
| 137 | DVFS and REGBUS CLP runs | 10d | 2015-06-18 | 2015-07-01 | 127 |  | Vishnu |
| 138 | LPS NW Regression runs | 10d | 2015-06-29 | 2015-07-10 | 130 |  | Vishnu |
| 139 | SW verification for DVFS and regbus | 5d | 2015-06-18 | 2015-06-24 | 127 |  | Bhum |
| 140 | Sanity bench | 5d | 2015-06-29 | 2015-07-03 | 130 |  | Vishnu |
| 141 | Documentation | 8d | 2015-07-06 | 2015-07-15 | 140 |  | Vishnu |

Removed: 38 Dynamic change of frequences or DVFS *; 95 Release Documentation

Changed:

| ID | Task | Start | Finish | Duration | Complete | Total float | Other |
| --- | --- | --- | --- | --- | --- | --- | --- |
| 1 | **Phase1 M1** |  | 2015-05-06 A |  | 49% → 100% | 32d → none |  |
| 2 | **RTL Design** |  | 2015-05-06 A |  | 30% → 100% | 32d → none |  |
| 4 | MB changes |  | 2015-04-15 A |  | 60% → 100% | 1d → none |  |
| 5 | SB and RTR changes |  | 2015-04-22 A |  | 20% → 100% | 0d → none |  |
| 6 | Isolation LP Control signals to low | 2015-04-23 A | 2015-04-29 → 2015-04-23 A (-6d) | 5d → 1d | 0% → 100% | 0d → none | was named Isolation polarity changes for output ports * |
| 7 | V1 arch RTL cleanup in the design | 2015-04-30 A | 2015-05-06 A |  | 0% → 100% | 32d → none |  |
| 8 | **NSPS:** |  | 2015-04-29 A |  | 30% → 100% | 37d → none |  |
| 9 | Aggregation logic | 2015-04-28 A | 2015-04-29 A |  | 0% → 100% | 37d → none |  |
| 10 | PDS |  | 2015-04-27 A |  | 50% → 100% | 37d → none |  |
| 11 | **Gen_ip:** |  | 2015-05-01 → 2015-04-27 A (-4d) | 38d → 34d | 50% → 100% | 0d → none |  |
| 14 | Cleanup of V1 architecture code | 2015-04-16 A | 2015-04-16 A |  | 0% → 100% | 7d → none |  |
| 15 | Cleanup for REGBUS | 2015-04-17 A | 2015-04-20 A |  | 0% → 100% | 7d → none |  |
| 16 | V2 Architecture integration | 2015-04-30 → 2015-04-24 A (-6d) | 2015-05-01 → 2015-04-27 A (-4d) |  | 0% → 100% | 0d → none |  |
| 17 | **Tune_power:** | 2015-04-21 A | 2015-04-28 A |  | 0% → 100% | 6d → none |  |
| 18 | Cleanup for REGBUS | 2015-04-21 A | 2015-04-21 A |  | 0% → 100% | 6d → none |  |
| 19 | Support for V2 architecture | 2015-04-22 A | 2015-04-28 A |  | 0% → 100% | 6d → none |  |
| 26 | GenStreamX changes for LP TB integration | 2015-05-04 A | 2015-05-06 A |  | 0% → 100% | 0d → none |  |
| 28 | **Phase1 M2** | 2015-04-02 A → 2015-04-20 A (+18d) |  | 30d → 18d | 7% → 98% | 30d → 0d |  |
| 30 | **AXI4 GenCPF:** | 2015-04-22 A | 2015-05-01 A |  | 0% → 100% | 1d → none |  |
| 31 | Cleanup for REGBUS | 2015-04-22 A | 2015-04-22 A |  | 0% → 100% | 1d → none |  |
| 32 | Changes from pin-level to PD level Iso rules | 2015-04-23 A | 2015-04-23 A |  | 0% → 100% | 1d → none |  |
| 33 | RTL grouping | 2015-04-24 A | 2015-04-30 A |  | 0% → 100% | 1d → none |  |
| 34 | Tech and Lib pointers | 2015-05-01 A | 2015-05-01 A |  | 0% → 100% | 1d → none |  |
| 35 | CLP scritps | 2015-05-04 A | 2015-05-05 A |  | 0% → 100% | 1d → none |  |
| 36 | **Nemesis traffic generation** | 2015-04-02 A → 2015-04-20 A (+18d) | 2015-05-01 A | 22d → 10d | 23% → 100% | 12d → none |  |
| 37 | SYNC_UNIT traffic generation * |  | 2015-04-20 A |  | 70% → 100% | 2.5d → none |  |
| 38 | Power and Clock gating/enabling * |  | 2015-04-27 A |  | 50% → 100% | 12d → none |  |
| 39 | Cold boot randomization * | 2015-04-28 A | 2015-04-29 A |  | 0% → 100% | 12d → none |  |
| 40 | Error scenarios for LP * | 2015-04-30 A | 2015-05-01 A |  | 0% → 100% | 12d → none |  |
| 41 | **AXI4 LP Checkers work** | 2015-05-07 A | 2015-05-12 A |  | 0% → 100% | 5d → none |  |
| 42 | Element level LP checker | 2015-05-07 A | 2015-05-08 A |  | 0% → 100% | 24d → none |  |
| 43 | Power Domain level Isolation LP checker | 2015-05-07 A | 2015-05-08 A |  | 0% → 100% | 5d → none |  |
| 44 | NSPS PD Sequence LP checker | 2015-05-11 A | 2015-05-12 A |  | 0% → 100% | 5d → none |  |
| 45 | CLP and LPS AXI4 hand written cfgs passing | 2015-05-07 A | 2015-05-13 A |  | 0% → 100% | 0d → none |  |
| 46 | Test/Coverage Plan Review | 2015-04-23 A |  |  | 0% → 65% | 23d → 2.4d |  |
| 47 | **Phase1 M3** | 2015-05-04 A |  |  | 0% → 88% | 8d → 35d |  |
| 49 | **AXI4 GenLPBindCheckers:** | 2015-05-11 A | 2015-05-13 A |  | 0% → 100% | 28d → none |  |
| 50 | Element level LP checker | 2015-05-11 A | 2015-05-11 A |  | 0% → 100% | 36d → none |  |
| 51 | Power Domain level Isolation LP checker | 2015-05-12 A | 2015-05-12 A |  | 0% → 100% | 36d → none |  |
| 52 | NSPS PD Sequence LP checker | 2015-05-13 A | 2015-05-13 A |  | 0% → 100% | 28d → none |  |
| 53 | **Non-AXI4 GenCPF:** | 2015-05-04 A | 2015-05-06 A |  | 0% → 100% | 20d → none |  |
| 54 | Changes from pin-level to PD level Iso rules | 2015-05-04 A | 2015-05-04 A |  | 0% → 100% | 28d → none |  |
| 55 | RTL grouping | 2015-05-05 A | 2015-05-05 A |  | 0% → 100% | 28d → none |  |
| 56 | Tech and Lib pointers | 2015-05-06 A | 2015-05-06 A |  | 0% → 100% | 28d → none |  |
| 57 | **Non-AXI4 GenLPBindCheckers:** | 2015-05-19 A | 2015-05-21 A |  | 0% → 100% | 24d → none |  |
| 58 | Element level LP checker | 2015-05-19 A | 2015-05-19 A |  | 0% → 100% | 36d → none |  |
| 59 | Power Domain level Isolation LP checker | 2015-05-20 A | 2015-05-20 A |  | 0% → 100% | 24d → none |  |
| 60 | NSPS PD Sequence LP checker | 2015-05-21 A | 2015-05-21 A |  | 0% → 100% | 24d → none |  |
| 61 | **Non-AXI4 LP Checkers work** | 2015-05-11 A |  |  | 0% → 91% | 24d → 42d |  |
| 62 | Element level LP checker | 2015-05-11 A |  |  | 0% → 90% | 24d → 42d |  |
| 63 | Power Domain level Isolation LP checker | 2015-05-13 A | 2015-05-13 A |  | 0% → 100% | 28d → none |  |
| 64 | AXI4 Handwritten cfgs CDC runs | 2015-05-14 A | 2015-05-20 A |  | 0% → 100% | 5d → none |  |
| 65 | AXI4 Handwritten cfgs Synthesis runs | 2015-05-14 A |  |  | 0% → 50% | 2d → 17d |  |
| 66 | CLP NW Regression health (AXI4 80%) | 2015-05-14 A | 2015-05-27 A |  | 0% → 100% | 0d → none |  |
| 67 | LPS NW Regression health (AXI4 80% w/o host checkers) | 2015-05-14 A | 2015-05-27 A |  | 0% → 100% | 0d → none |  |
| 68 | Code Coverage (AXI4 80%) | 2015-05-14 A | 2015-05-27 A |  | 0% → 100% | 3d → none |  |
| 69 | Verification Plan Documentation and Review | 2015-05-04 → 2015-05-14 A (+10d) | 2015-05-13 → 2015-05-25 (+12d) |  | 0% → 65% | 30d → 37d | constraint none → start no earlier than 2015-05-14 |
| 70 | **Phase1 M4** | 2015-04-27 A |  |  | 0% → 72% | 10d → 25d |  |
| 71 | **SW Verif** | 2015-04-27 A |  |  | 0% → 95% | 20d → 35d |  |
| 72 | **Testplan:** | 2015-04-27 A |  |  | 0% → 88% | 23d → 53d |  |
| 73 | Tune_power | 2015-04-27 A |  |  | 0% → 80% | 35d → 55d | resources Vishnu → Bhum |
| 74 | CPFs | 2015-04-30 A | 2015-04-30 A |  | 0% → 100% | 35d → none |  |
| 75 | LP RTL | 2015-05-01 A | 2015-05-01 A |  | 0% → 100% | 35d → none |  |
| 76 | **Verif** | 2015-05-07 A |  |  | 0% → 96% | 20d → 35d |  |
| 77 | Tune_power | 2015-05-07 A |  |  | 0% → 90% | 41d → 44d |  |
| 78 | CPFs | 2015-05-07 A | 2015-05-18 A |  | 0% → 100% | 39d → none |  |
| 79 | LP RTL | 2015-05-07 A |  |  | 0% → 90% | 37d → 40d |  |
| 80 | LP Property Coverage monitor | 2015-05-07 A | 2015-05-27 A |  | 0% → 100% | 32d → none |  |
| 81 | Error PD & CD Sequence test | 2015-05-13 A | 2015-05-20 A |  | 0% → 100% | 5d → none |  |
| 82 | **CPFs for DVFS** | 2015-04-29 A | 2015-05-08 A |  | 0% → 100% | 31d → none |  |

| ID | Task | Start | Finish | Duration | Complete | Total float |
| --- | --- | --- | --- | --- | --- | --- |
| 83 | Definition of DVFS modes of operation | 2015-04-29 A | 2015-05-04 A |  | 0% → 100% | 41d → none |
| 84 | GenCPF update for DVFS | 2015-05-07 A | 2015-05-08 A |  | 0% → 100% | 39d → none |
| 85 | **CPFs for Scan** | 2015-04-30 A | 2015-05-15 A |  | 0% → 100% | 28d → none |
| 86 | Definition of Scan aware synthesis strategy | 2015-04-30 A | 2015-05-01 A |  | 0% → 100% | 44d → none |
| 87 | GenCPF update for Scan | 2015-05-14 A | 2015-05-15 A |  | 0% → 100% | 28d → none |
| 88 | AXI4 and Non-AXI4 CDC runs | 2015-05-21 A |  |  | 0% → 50% | 5d → 20d |
| 90 | Functional Coverage Coding (70%) | 2015-05-21 A |  |  | 0% → 30% | 5d → 1d |
| 91 | CLP NW Regression health (AXI4 100%, Non-AXI4 90%) | 2015-05-28 A |  |  | 0% → 80% | 0d → 8d |
| 92 | LPS NW Regression health (AXI4 100%, Non-AXI4 90%) | 2015-05-28 A |  |  | 0% → 80% | 0d → 8d |
| 93 | Code Coverage (AXI4 100%, Non-AXI4 90%) | 2015-05-28 A |  |  | 0% → 70% | 3d → 5.6d |
| 95 | **Phase1 M5** | 2015-05-28 → 2015-06-04 A (+7d) |  | 20d → 15d | 0% → 38% | 0d → 15d |
| 96 | Functional Coverage Coding (100%) | 2015-06-04 A |  |  | 0% → 20% | 5d → 20d |
| 98 | CLP NW Regression health (100%) | 2015-06-11 A |  |  | 0% → 80% | 0d → 15d |
| 99 | LPS NW Regression health (100%) | 2015-06-11 A |  |  | 0% → 80% | 0d → 15d |
| 100 | Code Coverage (100%) | 2015-06-11 A |  |  | 0% → 80% | 3d → 18d |
